# Diagrama_gantt

Schedule from MS Project, 2019-01-14 to 2019-07-18, status date 2018-11-09, costs in €.
Microsoft

## Calendars

- Estándar: Mon-Fri 09:00-13:00, 15:00-19:00; Sat-Sun off. Exceptions (off unless hours are given): 2019-02-28 (Día de andalucia), 2019-04-18 (Jueves santo), 2019-04-19 (Vernes santo), 2019-05-01 (Día del Trabajo).

## Resources

| Resource |
| --- |
| Scrum Master-1 |
| Desarrollador Frontend-1 |
| Scrum Master-2 |
| User Experience |
| Desarrollador Backend-1 |
| Experto en redes neuronales |
| Automatizador test backend |
| Analista de datos |
| Desarrollador Base de datos-1 |
| Product owner-1 |
| Hacker ético |
| Scrum Master 3 |
| Desarrollador Frontend-2 |
| Desarrollador Frontend-3 |
| Desarrollador Backend-2 |
| Desarrollador Backend-3 |
| Desarrollador Base de datos-2 |
| Desarrollador Base de datos-3 |
| DevOps-1 |
| DevOps-2 |
| Servidores Hospital PTS |
| Automatizador Test Frontend |
| Product owner-2 |
| Costos Operación |
| Ordenadores |
| Otro equipo informatico |

## Schedule

| ID | WBS | Task | Type | Duration | Start | Finish | Predecessors | Total slack | Free slack | Constraint | Resources | Work | Cost |
| --- | --- | --- | --- | --- | --- | --- | --- | --- | --- | --- | --- | --- | --- |
| 1 | 1 | **Sprint 0** |  | 20d | 2019-01-14 | 2019-02-08 |  |  |  |  |  | 888h | 24,066.8 |
| 2 | 1.1 | Contratación de personal para células Agiles |  | 15d | 2019-01-14 | 2019-02-01 |  | 0.5d | 0d |  | Product owner-1 | 120h | 4,090.8 |
| 3 | 1.2 | Solicitud de servidores al Hospital PTS de Granada |  | 10d | 2019-01-16 | 2019-01-29 |  | 118d |  | start no earlier than 2019-01-16 | Product owner-2 | 80h | 2,727.2 |
| 4 | 1.3 | **Inception Ágil** |  | 5d | 2019-02-04 | 2019-02-08 | 2 | 0d |  |  |  | 688h | 17,248.8 |
| 5 | 1.3.1 | Asignación de recursos y usuarios |  | 2d | 2019-02-04 | 2019-02-05 |  | 0.5d | 0d |  | Product owner-1; Analista de datos; Automatizador test backend; Automatizador Test Frontend; Desarrollador Backend-1; Desarrollador Backend-2; Desarrollador Backend-3; Desarrollador Base de datos-1; Desarrollador Base de datos-2; Desarrollador Base de datos-3; Desarrollador Frontend-1; Desarrollador Frontend-2; Desarrollador Frontend-3; DevOps-1; DevOps-2; Experto en redes neuronales; Product owner-2; Scrum Master-1; Scrum Master-2; Scrum Master 3; User Experience | 336h | 8,351.68 |
| 6 | 1.3.2 | Inducción de informáticos del Hospital PTS |  | 1d | 2019-02-06 | 2019-02-06 | 5 | 0.5d | 0d |  | Product owner-1; Product owner-2 | 16h | 545.44 |
| 7 | 1.3.3 | Explicación del proyecto y de la metodología de trabajo | manual | 1d | 2019-02-07 | 2019-02-07 | 6 |  |  |  | Product owner-1; Analista de datos; Automatizador test backend; Automatizador Test Frontend; Desarrollador Backend-1; Desarrollador Backend-2; Desarrollador Backend-3; Desarrollador Base de datos-1; Desarrollador Base de datos-2; Desarrollador Base de datos-3; Desarrollador Frontend-1; Desarrollador Frontend-2; Desarrollador Frontend-3; DevOps-1; DevOps-2; Experto en redes neuronales; Product owner-2; Scrum Master-1; Scrum Master-2; Scrum Master 3; User Experience; Hacker ético | 176h | 4,448.56 |
| 8 | 1.3.4 | Distribución de células Agiles | manual | 1d | 2019-02-08 | 2019-02-08 | 7 |  |  |  | Automatizador test backend; User Experience; Desarrollador Backend-1; Desarrollador Backend-2; Desarrollador Backend-3; Desarrollador Base de datos-1; Desarrollador Base de datos-2; Desarrollador Base de datos-3; Desarrollador Frontend-1; Desarrollador Frontend-2; Desarrollador Frontend-3; DevOps-2; Experto en redes neuronales; Product owner-1; Scrum Master-1; Scrum Master-2; Scrum Master 3; Analista de datos; Automatizador Test Frontend; DevOps-1 | 160h | 3,903.12 |
| 9 | 2 | **Sprint 1** |  | 19d | 2019-02-11 | 2019-03-08 | 1 | 0.5d | 0d |  |  | 672h | 18,812.48 |
| 10 | 2.1 | Creación y refinación del Sprint Backlog |  | 3d | 2019-02-11 | 2019-02-13 |  | 0.5d | 0d |  | Product owner-1; Scrum Master-1; Scrum Master-2; Scrum Master 3; Product owner-2 | 120h | 3,436.32 |
| 11 | 2.2 | Planeación del sprint |  | 1d | 2019-02-14 | 2019-02-14 | 10 | 0.5d | 0d |  | Scrum Master-1; Scrum Master-2; Scrum Master 3; Analista de datos; Automatizador test backend; Automatizador Test Frontend; Desarrollador Backend-1; Desarrollador Backend-2; Desarrollador Backend-3; Desarrollador Base de datos-1; Desarrollador Base de datos-2; Desarrollador Base de datos-3; Desarrollador Frontend-1; Desarrollador Frontend-2; Desarrollador Frontend-3; DevOps-1; DevOps-2; Experto en redes neuronales; Product owner-1; Product owner-2; User Experience | 168h | 4,175.84 |
| 12 | 2.3 | Realización del documento de seguridad |  | 4d | 2019-02-15 | 2019-02-20 | 11 | 0.5d | 0d |  | Product owner-1; Hacker ético; Product owner-2 | 96h | 3,272.64 |
| 13 | 2.4 | Creación y despliegue de los ambientes de desarrollo, pruebas y producción |  | 9d | 2019-02-21 | 2019-03-06 | 12 | 0.5d | 0d |  | DevOps-1; DevOps-2 | 144h | 4,582.08 |
| 14 | 2.5 | Elección de los sistemas de Bases de Datos |  | 2d | 2019-03-07 | 2019-03-08 | 13 | 0.5d |  |  | Desarrollador Base de datos-1; Desarrollador Base de datos-2; Desarrollador Base de datos-3 | 48h | 1,091.04 |
| 15 | 2.6 | Elección de lenguajes para el desarrollo del front-end |  | 2d | 2019-03-07 | 2019-03-08 | 13 | 0.5d |  |  | Desarrollador Frontend-1; Desarrollador Frontend-2; Desarrollador Frontend-3 | 48h | 1,091.04 |
| 16 | 2.7 | Elección de lenguajes para el desarrollo del back-end |  | 2d | 2019-03-07 | 2019-03-08 | 13 | 0.5d |  |  | Desarrollador Backend-1; Desarrollador Backend-2; Desarrollador Backend-3 | 48h | 1,163.52 |
| 17 | 3 | **Sprint 2** |  | 15d | 2019-03-11 | 2019-03-29 | 9 |  |  |  |  | 1488h | 34,395.2 |
| 19 | 3.1 | Planeacion del sprint. |  | 4h | 2019-03-11 | 2019-03-11 |  | 2d | 0d |  | Analista de datos; Automatizador test backend; User Experience; Desarrollador Backend-1; Desarrollador Backend-2; Desarrollador Backend-3; Desarrollador Base de datos-1; Desarrollador Base de datos-2; Desarrollador Base de datos-3; Desarrollador Frontend-1; Costos Operación [0.1%] | 40h | 909.12 |
| 20 | 3.2 | **Desarrollo Front-end-1** |  | 13d | 2019-03-11 | 2019-03-28 | 19 | 2d | 0.5d |  |  | 480h | 10,340.08 |
| 21 | 3.2.1 | Asignación de las historias de usuario |  | 1d | 2019-03-11 | 2019-03-12 |  | 2d | 0d |  | Scrum Master-1; Automatizador Test Frontend; Desarrollador Frontend-1; Desarrollador Frontend-2; Desarrollador Frontend-3; User Experience | 48h | 1,042.48 |
| 22 | 3.2.2 | Creación de scripts de pruebas funcionales con criterios de aceptación de usuarios |  | 10d | 2019-03-12 | 2019-03-26 | 21 | 2d | 0d |  | Automatizador Test Frontend | 80h | 1,454.4 |
| 23 | 3.2.3 | Desarrollo de prototipos de la aplicación |  | 10d | 2019-03-12 | 2019-03-26 | 21 | 2d | 0d |  | Desarrollador Frontend-1; Desarrollador Frontend-2; Desarrollador Frontend-3; User Experience | 320h | 6,970.4 |
| 24 | 3.2.4 | Despliegue del artefacto o prototipo |  | 2d | 2019-03-26 | 2019-03-28 | 22, 23 | 2d |  |  | DevOps-1; Desarrollador Frontend-1 | 32h | 872.8 |
| 25 | 3.3 | **Desarrollo Bases de Datos-1** |  | 13d | 2019-03-11 | 2019-03-28 | 19 |  |  |  |  | 416h | 9,837.68 |
| 26 | 3.3.1 | Asignación de las historias de usuario |  | 1d | 2019-03-11 | 2019-03-12 |  | 2d | 0d |  | Scrum Master-2; Analista de datos; Desarrollador Base de datos-1; Desarrollador Base de datos-2; Desarrollador Base de datos-3 | 40h | 957.68 |
| 27 | 3.3.2 | Creación de modelos de bases de datos |  | 11d | 2019-03-12 | 2019-03-27 | 26 | 2d | 0d |  | Desarrollador Base de datos-1; Desarrollador Base de datos-2; Desarrollador Base de datos-3; Analista de datos | 352h | 8,334.48 |
| 28 | 3.3.3 | Creación de las bases de datos en los ambientes |  | 1d | 2019-03-27 | 2019-03-28 | 27 | 2d |  |  | Desarrollador Base de datos-1; Desarrollador Base de datos-2; Desarrollador Base de datos-3 | 24h | 545.52 |

| ID | WBS | Task | Duration | Start | Finish | Predecessors | Total slack | Free slack | Constraint | Resources | Work | Cost |
| --- | --- | --- | --- | --- | --- | --- | --- | --- | --- | --- | --- | --- |
| 29 | 3.4 | **Desarrollo Back-end-1** | 13d | 2019-03-11 | 2019-03-28 | 19 | 2d | 0.5d |  |  | 384h | 9,132.48 |
| 30 | 3.4.1 | Asignación de historias de usuarios | 1d | 2019-03-11 | 2019-03-12 |  | 2d | 0d |  | Scrum Master 3; Automatizador test backend; Desarrollador Backend-1; Desarrollador Backend-2; Desarrollador Backend-3; DevOps-2; Experto en redes neuronales | 56h | 1,375.68 |
| 31 | 3.4.2 | Definición de los servicios principales | 3d | 2019-03-12 | 2019-03-15 | 30 | 2d | 0d |  | Automatizador test backend; Desarrollador Backend-1; Desarrollador Backend-2; Desarrollador Backend-3 | 96h | 2,181.6 |
| 32 | 3.4.3 | Modelado de la red neuronal | 3d | 2019-03-12 | 2019-03-15 | 30 | 2d | 0d |  | Experto en redes neuronales | 24h | 581.76 |
| 33 | 3.4.4 | Creación de pruebas unitarias | 4d | 2019-03-15 | 2019-03-21 | 31, 32 | 2d | 0d |  | Desarrollador Backend-1; Desarrollador Backend-2; Desarrollador Backend-3 | 96h | 2,327.04 |
| 34 | 3.4.5 | Desarrollo de la API de los servicios principales | 4d | 2019-03-21 | 2019-03-27 | 33, 31, 32 | 2d | 0d |  | Desarrollador Backend-1; Desarrollador Backend-2; Desarrollador Backend-3 | 96h | 2,327.04 |
| 35 | 3.4.6 | Realización de pruebas de integración para las interfaces | 1d | 2019-03-27 | 2019-03-28 | 34 | 2d |  |  | Automatizador test backend; Desarrollador Backend-1 | 16h | 339.36 |
| 36 | 3.5 | Sprint Review | 4h | 2019-03-29 | 2019-03-29 | 20, 25, 29 | 1.5d | 0d | start no earlier than 2019-03-29 | Analista de datos; Automatizador test backend; Automatizador Test Frontend; User Experience; Desarrollador Backend-1; Desarrollador Backend-2; Desarrollador Backend-3; Desarrollador Base de datos-1; Desarrollador Base de datos-2; Desarrollador Base de datos-3; Desarrollador Frontend-1; Desarrollador Frontend-2; Desarrollador Frontend-3; DevOps-1; DevOps-2; Experto en redes neuronales; Product owner-1; Scrum Master-1; Scrum Master-2; Scrum Master 3; Product owner-2 | 84h | 2,087.92 |
| 37 | 3.6 | Sprint Retrospective | 4h | 2019-03-29 | 2019-03-29 | 36 | 1.5d |  |  | Analista de datos; Automatizador test backend; Automatizador Test Frontend; User Experience; Desarrollador Backend-1; Desarrollador Backend-2; Desarrollador Backend-3; Desarrollador Base de datos-1; Desarrollador Base de datos-2; Product owner-2; Desarrollador Base de datos-3; Desarrollador Frontend-1; Desarrollador Frontend-2; Desarrollador Frontend-3; DevOps-1; DevOps-2; Experto en redes neuronales; Product owner-1; Scrum Master-1; Scrum Master-2; Scrum Master 3 | 84h | 2,087.92 |
| 38 | 4 | **Sprint 3** | 13d | 2019-04-01 | 2019-04-17 | 17 |  |  |  |  | 1152h | 27,161.84 |
| 39 | 4.1 | Planeación del sprint | 4h | 2019-04-01 | 2019-04-01 |  | 1.5d | 0d |  | Analista de datos; Automatizador test backend; Automatizador Test Frontend; User Experience; Product owner-2; Desarrollador Backend-1; Desarrollador Backend-2; Desarrollador Backend-3; Desarrollador Base de datos-1; Desarrollador Base de datos-2; Desarrollador Base de datos-3; Desarrollador Frontend-1; Desarrollador Frontend-2; Desarrollador Frontend-3; DevOps-1; DevOps-2; Experto en redes neuronales; Product owner-1; Scrum Master-1; Scrum Master-2; Scrum Master 3 | 80h | 1,990.96 |
| 40 | 4.2 | **Desarrollo Front-end-2** | 11d | 2019-04-01 | 2019-04-16 | 39 | 1.5d | 0.5d |  |  | 352h | 7,721.84 |
| 41 | 4.2.1 | Asignación de historias de usuario | 1d | 2019-04-01 | 2019-04-02 |  | 1.5d | 0d |  | Scrum Master-1; Automatizador Test Frontend; Desarrollador Frontend-1; Desarrollador Frontend-2; Desarrollador Frontend-3; User Experience | 48h | 1,042.48 |
| 42 | 4.2.2 | Creación de pruebas unitarias | 5d | 2019-04-02 | 2019-04-09 | 41 | 1.5d | 0d |  | Desarrollador Frontend-1; Desarrollador Frontend-2; Desarrollador Frontend-3 | 120h | 2,727.6 |
| 43 | 4.2.3 | Creación de scripts de pruebas funcionales | 5d | 2019-04-02 | 2019-04-09 | 41 | 6.5d |  |  | Automatizador Test Frontend | 40h | 727.2 |
| 44 | 4.2.4 | Creación de los primeros componentes | 4d | 2019-04-09 | 2019-04-15 | 42 | 1.5d | 0d |  | Desarrollador Frontend-1; Desarrollador Frontend-2; Desarrollador Frontend-3; User Experience | 128h | 2,788.16 |
| 45 | 4.2.5 | Despliegue de los componentes | 1d | 2019-04-15 | 2019-04-16 | 44 | 1.5d |  |  | DevOps-1; Desarrollador Frontend-1 | 16h | 436.4 |
| 46 | 4.3 | **Desarrollo Bases de Datos-2** | 11d | 2019-04-01 | 2019-04-16 | 39 | 1.5d | 0.5d |  |  | 304h | 7,231.28 |
| 47 | 4.3.1 | Asignación de historias de usuarios | 1d | 2019-04-01 | 2019-04-02 |  | 1.5d | 0d |  | Scrum Master-2; Desarrollador Base de datos-1; Desarrollador Base de datos-2; Desarrollador Base de datos-3 | 32h | 745.52 |
| 48 | 4.3.2 | Creación de la migración de esquemas de bases de datos | 8d | 2019-04-02 | 2019-04-12 | 47 | 1.5d | 0d |  | Desarrollador Base de datos-1; Desarrollador Base de datos-2; Desarrollador Base de datos-3; Analista de datos | 256h | 6,061.44 |
| 49 | 4.3.3 | Alimentación de los esquemas creados en las BD con datos de prueba | 2d | 2019-04-12 | 2019-04-16 | 48 | 1.5d |  |  | Analista de datos | 16h | 424.32 |
| 50 | 4.4 | **Desarrollo Back-end-2** | 11d | 2019-04-01 | 2019-04-16 | 39 | 1.5d | 0.5d |  |  | 248h | 6,041.92 |
| 51 | 4.4.1 | Asignación de historias de usuario | 1d | 2019-04-01 | 2019-04-02 |  | 1.5d | 0d |  | Scrum Master 3; Automatizador test backend; Desarrollador Backend-1; Desarrollador Backend-2; Desarrollador Backend-3; DevOps-2 | 48h | 1,181.76 |
| 52 | 4.4.2 | Desarrollo de pruebas unitarias | 4d | 2019-04-02 | 2019-04-08 | 51 | 1.5d | 0d |  | Desarrollador Backend-3; Desarrollador Backend-1; Desarrollador Backend-2 | 96h | 2,327.04 |
| 53 | 4.4.3 | Desarrollo de los modelos de negocios | 4d | 2019-04-08 | 2019-04-12 | 52 | 1.5d | 0d |  | Desarrollador Backend-1; Desarrollador Backend-2 | 64h | 1,551.36 |
| 54 | 4.4.4 | Desarrollo de la red neuronal | 3d | 2019-04-08 | 2019-04-11 | 52 | 2.5d | 1d |  | Experto en redes neuronales | 24h | 581.76 |
| 55 | 4.4.5 | Pruebas de servicios | 1d | 2019-04-12 | 2019-04-15 | 54, 53 | 1.5d | 0d | start no earlier than 2019-04-05 | Automatizador test backend | 8h | 145.44 |
| 56 | 4.4.6 | Despliegue de componentes | 1d | 2019-04-15 | 2019-04-16 | 55 | 1.5d |  |  | DevOps-2 | 8h | 254.56 |
| 57 | 4.5 | Sprint Review | 4h | 2019-04-17 | 2019-04-17 | 40, 46, 50 | 63d | 0d | start no earlier than 2019-04-17 | Analista de datos; Automatizador test backend; Automatizador Test Frontend; User Experience; Desarrollador Backend-1; Desarrollador Backend-2; Desarrollador Backend-3; Desarrollador Base de datos-1; Desarrollador Base de datos-2; Desarrollador Base de datos-3; Desarrollador Frontend-1; Desarrollador Frontend-2; Desarrollador Frontend-3; DevOps-1; Experto en redes neuronales; Product owner-1; Scrum Master-1; Scrum Master-2; Scrum Master 3; DevOps-2; Product owner-2 | 84h | 2,087.92 |
| 58 | 4.6 | Sprint Retrospective | 4h | 2019-04-17 | 2019-04-17 | 57 | 63d |  | start no earlier than 2019-04-17 | Analista de datos; Automatizador test backend; Automatizador Test Frontend; User Experience; Desarrollador Backend-1; Desarrollador Backend-2; Desarrollador Backend-3; Desarrollador Base de datos-1; Desarrollador Base de datos-2; Desarrollador Base de datos-3; Desarrollador Frontend-1; Desarrollador Frontend-2; Desarrollador Frontend-3; DevOps-1; Product owner-1; Scrum Master-1; Scrum Master-2; Scrum Master 3; DevOps-2; Experto en redes neuronales; Product owner-2 | 84h | 2,087.92 |

| ID | WBS | Task | Type | Duration | Start | Finish | Predecessors | Total slack | Resources | Work | Cost |
| --- | --- | --- | --- | --- | --- | --- | --- | --- | --- | --- | --- |
| 59 | 5 | **Sprint 4** |  | 14d | 2019-04-22 | 2019-05-10 | 38 |  |  | 1208h | 28,425.12 |
| 60 | 5.1 | Planeación del sprint |  | 1d | 2019-04-22 | 2019-04-22 |  | 0d | Analista de datos; Automatizador test backend; Automatizador Test Frontend; User Experience; Desarrollador Backend-1; Desarrollador Backend-2; Desarrollador Backend-3; Desarrollador Base de datos-1; Desarrollador Base de datos-2; Desarrollador Base de datos-3; Desarrollador Frontend-1; Desarrollador Frontend-2; Desarrollador Frontend-3; DevOps-1; DevOps-2; Experto en redes neuronales; Product owner-1; Scrum Master-1; Scrum Master-2; Scrum Master 3; Product owner-2 | 168h | 4,175.84 |
| 61 | 5.2 | **Desarrollo Front-end-3** |  | 12d | 2019-04-23 | 2019-05-09 | 60 | 0d |  | 320h | 7,000.64 |
| 62 | 5.2.1 | Desarrollo de componentes UI |  | 9d | 2019-04-23 | 2019-05-06 |  | 0d | Desarrollador Frontend-1; Desarrollador Frontend-2; Desarrollador Frontend-3; User Experience | 288h | 6,273.36 |
| 63 | 5.2.2 | Pruebas de componentes UI |  | 2d | 2019-05-07 | 2019-05-08 | 62 | 0d | Automatizador Test Frontend | 16h | 290.88 |
| 64 | 5.2.3 | Despliegue de componentes UI |  | 1d | 2019-05-09 | 2019-05-09 | 63 | 0d | Desarrollador Frontend-1; DevOps-1 | 16h | 436.4 |
| 65 | 5.3 | **Desarrollo Bases de Datos-3** |  | 12d | 2019-04-23 | 2019-05-09 | 60 | 0d |  | 248h | 5,788.64 |
| 66 | 5.3.1 | Desarrollo de la migración BD |  | 6d | 2019-04-23 | 2019-04-30 |  | 0d | Desarrollador Base de datos-1; Desarrollador Base de datos-2; Desarrollador Base de datos-3 | 144h | 3,273.12 |
| 67 | 5.3.2 | Ingreso de datos de prueba BD |  | 2d | 2019-05-02 | 2019-05-03 | 66 | 0d | Analista de datos | 16h | 424.32 |
| 68 | 5.3.3 | Pruebas BD |  | 3d | 2019-05-06 | 2019-05-08 | 67 | 0d | Analista de datos; Desarrollador Base de datos-1; Desarrollador Base de datos-2 | 72h | 1,727.52 |
| 69 | 5.3.4 | Despliegue BD |  | 1d | 2019-05-09 | 2019-05-09 | 68 | 0d | Desarrollador Base de datos-3; Desarrollador Base de datos-1 | 16h | 363.68 |
| 70 | 5.4 | **Desarrollo Back-end-3** |  | 12d | 2019-04-23 | 2019-05-09 | 60 | 0d |  | 304h | 7,284.16 |
| 71 | 5.4.1 | Desarrollo de servicios back-end |  | 8d | 2019-04-23 | 2019-05-03 |  | 0d | Desarrollador Backend-1; Desarrollador Backend-2; Desarrollador Backend-3 | 192h | 4,654.08 |
| 72 | 5.4.2 | Entrenamiento de la red neuronal |  | 8d | 2019-04-23 | 2019-05-03 |  | 0d | Experto en redes neuronales | 64h | 1,551.36 |
| 73 | 5.4.3 | Pruebas de componentes back-end |  | 3d | 2019-05-06 | 2019-05-08 | 71, 72 | 0d | Automatizador test backend | 24h | 436.32 |
| 74 | 5.4.4 | Despliegue de componentes |  | 1d | 2019-05-09 | 2019-05-09 | 73 | 0d | Desarrollador Backend-1; DevOps-2; Experto en redes neuronales | 24h | 642.4 |
| 75 | 5.5 | Sprint Review | manual | 4h | 2019-05-10 | 2019-05-10 | 61, 65, 70 |  | Analista de datos; Automatizador test backend; Automatizador Test Frontend; User Experience; Desarrollador Backend-1; Desarrollador Backend-2; Desarrollador Backend-3; Desarrollador Base de datos-1; Desarrollador Base de datos-2; Desarrollador Base de datos-3; Desarrollador Frontend-1; Desarrollador Frontend-2; Desarrollador Frontend-3; DevOps-1; DevOps-2; Experto en redes neuronales; Product owner-1; Scrum Master-1; Scrum Master-2; Scrum Master 3; Product owner-2 | 84h | 2,087.92 |
| 76 | 5.6 | Sprint Retrospective | manual | 4h | 2019-05-10 | 2019-05-10 | 75 |  | Analista de datos; Automatizador test backend; Automatizador Test Frontend; Desarrollador Backend-1; Desarrollador Backend-2; Desarrollador Backend-3; Desarrollador Base de datos-1; Desarrollador Base de datos-2; Desarrollador Base de datos-3; Desarrollador Frontend-1; Desarrollador Frontend-2; Desarrollador Frontend-3; DevOps-1; DevOps-2; Experto en redes neuronales; Product owner-1; Scrum Master-1; Scrum Master-2; Scrum Master 3; User Experience; Product owner-2 | 84h | 2,087.92 |
| 77 | 6 | **Sprint 5** |  | 15d | 2019-05-13 | 2019-05-31 | 59 |  |  | 2312h | 55,546.88 |
| 78 | 6.1 | Planeación del sprint |  | 1d | 2019-05-13 | 2019-05-13 |  | 0d | Analista de datos; Automatizador test backend; Automatizador Test Frontend; User Experience; Desarrollador Backend-1; Desarrollador Backend-2; Desarrollador Backend-3; Desarrollador Base de datos-1; Desarrollador Base de datos-2; Desarrollador Base de datos-3; Desarrollador Frontend-1; Desarrollador Frontend-2; Desarrollador Frontend-3; DevOps-1; DevOps-2; Experto en redes neuronales; Scrum Master-1; Scrum Master-2; Scrum Master 3; Product owner-1; Product owner-2 | 168h | 4,175.84 |
| 79 | 6.2 | Desarrollo Front-end-4 |  | 13d | 2019-05-14 | 2019-05-30 | 78 | 0d | Automatizador Test Frontend; Desarrollador Frontend-1; Desarrollador Frontend-2; Desarrollador Frontend-3; DevOps-1; Scrum Master-1; User Experience | 728h | 16,861.52 |
| 80 | 6.3 | Desarrollo Bases de Datos-4 |  | 13d | 2019-05-14 | 2019-05-30 | 78 | 0d | Desarrollador Base de datos-1; Desarrollador Base de datos-2; Desarrollador Base de datos-3; Scrum Master-2; Analista de datos | 520h | 12,449.84 |
| 81 | 6.4 | Desarrollo Back-end-4 |  | 13d | 2019-05-14 | 2019-05-30 | 78 | 0d | Automatizador test backend; Desarrollador Backend-1; Desarrollador Backend-2; Desarrollador Backend-3; DevOps-2; Experto en redes neuronales; Scrum Master 3 | 728h | 17,883.84 |
| 82 | 6.5 | Sprint Review |  | 4h | 2019-05-31 | 2019-05-31 | 79, 80, 81 | 0d | Analista de datos; Automatizador test backend; Automatizador Test Frontend; User Experience; Desarrollador Backend-1; Desarrollador Backend-2; Desarrollador Backend-3; Desarrollador Base de datos-1; Desarrollador Base de datos-2; Desarrollador Base de datos-3; Desarrollador Frontend-1; Desarrollador Frontend-2; Desarrollador Frontend-3; DevOps-1; DevOps-2; Experto en redes neuronales; Product owner-1; Scrum Master-1; Scrum Master-2; Scrum Master 3; Product owner-2 | 84h | 2,087.92 |
| 83 | 6.6 | Sprint Retrospective |  | 4h | 2019-05-31 | 2019-05-31 | 82 | 0d | Analista de datos; Automatizador test backend; Automatizador Test Frontend; User Experience; Desarrollador Backend-1; Desarrollador Backend-2; Desarrollador Backend-3; Desarrollador Base de datos-1; Desarrollador Base de datos-2; Desarrollador Base de datos-3; Desarrollador Frontend-1; Desarrollador Frontend-2; Desarrollador Frontend-3; DevOps-1; DevOps-2; Experto en redes neuronales; Product owner-1; Scrum Master-1; Scrum Master-2; Scrum Master 3; Product owner-2 | 84h | 2,087.92 |

| ID | WBS | Task | Type | Duration | Start | Finish | Predecessors | Total slack | Resources | Work | Cost |
| --- | --- | --- | --- | --- | --- | --- | --- | --- | --- | --- | --- |
| 84 | 7 | **Sprint 6** |  | 15d | 2019-06-03 | 2019-06-21 | 77 |  |  | 1400h | 34,655.28 |
| 85 | 7.1 | Planeación del sprint | manual | 1d | 2019-06-03 | 2019-06-03 |  |  | Analista de datos; Automatizador test backend; Automatizador Test Frontend; User Experience; Desarrollador Backend-1; Desarrollador Backend-2; Desarrollador Backend-3; Desarrollador Base de datos-1; Desarrollador Base de datos-2; Desarrollador Base de datos-3; Desarrollador Frontend-1; Desarrollador Frontend-2; Desarrollador Frontend-3; DevOps-1; DevOps-2; Experto en redes neuronales; Product owner-1; Scrum Master-1; Scrum Master-2; Scrum Master 3; Product owner-2 | 168h | 4,175.84 |
| 86 | 7.2 | **Integración Front-end Back-end Bases de Datos** |  | 11d | 2019-06-04 | 2019-06-18 | 85 | 0d |  | 984h | 24,188.4 |
| 87 | 7.2.1 | Planeación de la integración |  | 1d | 2019-06-04 | 2019-06-04 |  | 0d | Desarrollador Backend-1; Desarrollador Base de datos-1; Desarrollador Frontend-1; DevOps-2; Scrum Master-1; Scrum Master-2; Scrum Master 3; Product owner-1 | 64h | 1,684.88 |
| 88 | 7.2.2 | Pruebas de integración de los componentes del sistema |  | 3d | 2019-06-05 | 2019-06-07 | 87 | 0d | Desarrollador Backend-1; Desarrollador Backend-2; Desarrollador Backend-3; Desarrollador Base de datos-1; Desarrollador Base de datos-2; Desarrollador Base de datos-3; DevOps-1; Experto en redes neuronales; Analista de datos; Automatizador test backend; Automatizador Test Frontend; Desarrollador Frontend-1; Desarrollador Frontend-2; Desarrollador Frontend-3; DevOps-2; Scrum Master-1; Scrum Master-2; Scrum Master 3 | 432h | 10,436.64 |
| 89 | 7.2.3 | Corrección de errores |  | 2d | 2019-06-10 | 2019-06-11 | 88 | 0d | Analista de datos; Automatizador test backend; Automatizador Test Frontend | 48h | 1,006.08 |
| 90 | 7.2.4 | Pruebas punta a punta |  | 5d | 2019-06-12 | 2019-06-18 | 89 | 0d | Analista de datos; Automatizador test backend; Automatizador Test Frontend; User Experience; Desarrollador Backend-1; Desarrollador Base de datos-1; Desarrollador Frontend-1; DevOps-1; Product owner-1; Scrum Master-1; Product owner-2 | 440h | 11,060.8 |
| 91 | 7.3 | Despliegue del sistema |  | 1d | 2019-06-19 | 2019-06-19 | 86 | 0d | DevOps-1; DevOps-2 | 16h | 509.12 |
| 92 | 7.4 | Pruebas con el cliente final del MVP |  | 1d | 2019-06-20 | 2019-06-20 | 91 | 0d | Analista de datos; Automatizador test backend; Automatizador Test Frontend; Product owner-1; Desarrollador Backend-1; Desarrollador Base de datos-1; Desarrollador Frontend-1; Product owner-2 | 64h | 1,606.08 |
| 93 | 7.5 | Sprint Review |  | 4h | 2019-06-21 | 2019-06-21 | 92, 86, 91 | 0d | Analista de datos; Automatizador test backend; Automatizador Test Frontend; User Experience; Desarrollador Backend-1; Desarrollador Backend-2; Desarrollador Backend-3; Desarrollador Base de datos-1; Desarrollador Base de datos-2; Desarrollador Base de datos-3; Desarrollador Frontend-1; Desarrollador Frontend-2; Desarrollador Frontend-3; DevOps-1; DevOps-2; Experto en redes neuronales; Product owner-1; Scrum Master-1; Scrum Master-2; Scrum Master 3; Product owner-2 | 84h | 2,087.92 |
| 94 | 7.6 | Sprint Retrospective |  | 4h | 2019-06-21 | 2019-06-21 | 93 | 0d | Analista de datos; Automatizador test backend; Automatizador Test Frontend; Desarrollador Backend-1; Desarrollador Backend-2; Desarrollador Backend-3; Desarrollador Base de datos-1; Desarrollador Base de datos-2; Desarrollador Base de datos-3; Desarrollador Frontend-1; Desarrollador Frontend-2; Desarrollador Frontend-3; DevOps-1; DevOps-2; Experto en redes neuronales; Product owner-1; Scrum Master-1; Scrum Master-2; Scrum Master 3; Product owner-2; User Experience | 84h | 2,087.92 |
| 95 | 8 | **Sprint 7** |  | 15d | 2019-06-24 | 2019-07-12 | 84 |  |  | 692h | 18,151.68 |
| 96 | 8.1 | Planeación del sprint |  | 1d | 2019-06-24 | 2019-06-24 |  | 0d | Product owner-1; Scrum Master-1; Scrum Master-2; Scrum Master 3; Analista de datos; Automatizador test backend; Automatizador Test Frontend; Desarrollador Backend-1; Desarrollador Base de datos-1; Desarrollador Frontend-1; DevOps-1; Experto en redes neuronales; Hacker ético; Product owner-2 | 112h | 2,927.28 |
| 97 | 8.2 | Pruebas de Ethical Hacking |  | 8d | 2019-06-25 | 2019-07-04 | 96 | 0d | Hacker ético | 64h | 2,181.76 |
| 98 | 8.3 | Pruebas piloto con usuarios del Hospital PTS de Granada |  | 5d | 2019-07-05 | 2019-07-11 | 97 | 0d | Analista de datos; Automatizador test backend; Automatizador Test Frontend; Desarrollador Backend-1; Desarrollador Base de datos-1; Desarrollador Frontend-1; DevOps-1; Product owner-1; Product owner-2; User Experience | 400h | 10,060.8 |
| 99 | 8.4 | Sprint Review |  | 4h | 2019-07-12 | 2019-07-12 | 98, 97 | 0d | Analista de datos; Automatizador test backend; Automatizador Test Frontend; Desarrollador Backend-1; Desarrollador Base de datos-1; Desarrollador Frontend-1; DevOps-1; Hacker ético; Product owner-1; Product owner-2; Scrum Master-1; Scrum Master-2; Scrum Master 3; User Experience; Experto en redes neuronales | 60h | 1,539.4 |
| 100 | 8.5 | Sprint Retrospective |  | 4h | 2019-07-12 | 2019-07-12 | 99 | 0d | Analista de datos; Automatizador test backend; Automatizador Test Frontend; Desarrollador Backend-1; Desarrollador Base de datos-1; Desarrollador Frontend-1; DevOps-1; Hacker ético; Product owner-1; Product owner-2; Scrum Master-1; Scrum Master-2; Scrum Master 3; User Experience | 56h | 1,442.44 |
| 101 | 9 | Cierre del proyecto |  | 4d | 2019-07-15 | 2019-07-18 | 95 | 0d | Analista de datos; Automatizador test backend; Automatizador Test Frontend; Desarrollador Backend-1; Desarrollador Backend-2; Desarrollador Backend-3; Desarrollador Base de datos-1; Desarrollador Base de datos-2; Desarrollador Base de datos-3; Desarrollador Frontend-1; Desarrollador Frontend-2; Desarrollador Frontend-3; DevOps-1; DevOps-2; Experto en redes neuronales; Hacker ético; Product owner-1; Product owner-2; Scrum Master-1; Scrum Master-2; Scrum Master 3; User Experience | 704h | 17,794.24 |
